# SitioWeb-VinosLicoresGus

Schedule from MS Project, 2017-05-06 to 2017-08-19, costs in $, A marks actual dates.
Hewlett-Packard

## Calendars

- Estándar: Mon-Fri 09:00-13:00, 15:00-19:00; Sat-Sun off. Exceptions (off unless hours are given): 2017-05-20 09:00-13:00, 15:00-19:00, 2017-05-27 09:00-13:00, 15:00-19:00, 2017-06-03 09:00-13:00, 15:00-19:00, 2017-06-17 09:00-13:00, 15:00-19:00, 2017-06-24 09:00-13:00, 15:00-19:00, 2017-07-01 09:00-13:00, 15:00-19:00, 2017-07-08 09:00-13:00, 15:00-19:00, 2017-07-15 09:00-13:00, 15:00-19:00, 2017-07-22 09:00-13:00, 15:00-19:00, 2017-07-29 09:00-13:00, 15:00-19:00, 2017-08-05 09:00-13:00, 15:00-19:00, 2017-08-12 09:00-13:00, 15:00-19:00.

## Resources

| Resource | Rate |
| --- | --- |
| YSCG_ADMINCONF | 109 |
| BGRA_PROGRA | 100 |
| JCGC_DISEÑADOR | 102 |
| BGRA_ANALISTA | 98 |
| BGRA_VV | 100 |
| YSCG_ADMINPRO | 101 |
| Cliente |  |
| JCGC_ASEGURADOR | 103 |
| JCGC_TÉSTER | 108 |
| EQUIPO DE CÓMPUTO |  |

## Schedule

| ID | WBS | Task | Type | Duration | Start | Finish | Predecessors | Complete | Remaining | Total slack | Constraint | Resources | Work | Actual work | Cost | Actual cost |
| --- | --- | --- | --- | --- | --- | --- | --- | --- | --- | --- | --- | --- | --- | --- | --- | --- |
| 1 | 1 | **Plan preliminar** |  | 2.62d | 2017-05-08 16:30 A | 2017-05-11 11:30 |  | 99% | 0d | 0d |  | EQUIPO DE CÓMPUTO | 26h | 6h | 860 | 560 |
| 2 | 1.1 | Generar el WBS del producto inicial |  | 1h | 2017-05-08 16:30 A | 2017-05-08 17:30 A |  | 100% |  |  |  | YSCG_ADMINCONF; YSCG_ADMINPRO; EQUIPO DE CÓMPUTO | 1h | 1h | 109 | 109 |
| 3 | 1.2 | Generar project charter |  | 1h | 2017-05-09 16:30 A | 2017-05-09 17:30 A | 2 | 100% |  |  |  | YSCG_ADMINCONF; YSCG_ADMINPRO; JCGC_ASEGURADOR; EQUIPO DE CÓMPUTO | 1h | 1h | 109 | 109 |
| 4 | 1.3 | Plan de proyecto preliminar |  | 2h | 2017-05-10 10:30 A | 2017-05-10 12:30 A | 3 | 100% |  |  |  | YSCG_ADMINCONF; JCGC_ASEGURADOR; YSCG_ADMINPRO; EQUIPO DE CÓMPUTO | 2h | 2h | 218 | 218 |
| 5 | 1.4 | Generar matriz de responsabilidades |  | 1h | 2017-05-11 10:30 A | 2017-05-11 11:30 A | 4 | 100% |  |  |  | YSCG_ADMINCONF; JCGC_ASEGURADOR; YSCG_ADMINPRO | 1h | 1h | 109 | 109 |
| 6 | 2 | **Sitio Web Vinos y Licores Gus** |  | 83.75d | 2017-05-12 08:00 A | 2017-08-19 16:00 A |  | 100% |  |  |  | EQUIPO DE CÓMPUTO | 1240h | 1240h | 68,073 | 68,073 |
| 7 | 2.1 | Formación del equipo de desarrollo |  | 8h | 2017-05-12 16:30 A | 2017-05-15 16:30 A |  | 100% |  |  | finish no earlier than 2017-05-12 20:30 | YSCG_ADMINCONF | 8h | 8h | 872 | 872 |
| 8 | 2.2 | **Especificación de requerimientos** |  | 11.31d | 2017-05-17 16:30 A | 2017-05-30 20:30 A | 7 | 100% |  |  |  |  | 65h | 65h | 6,498 | 6,498 |
| 9 | 2.2.1 | **Elicitación de requerimientos** |  | 7.31d | 2017-05-17 16:30 A | 2017-05-25 19:00 A |  | 100% |  |  |  |  | 39h | 39h | 3,889 | 3,889 |
| 10 | 2.2.1.1 | Generar lista de proveedores |  | 1h | 2017-05-17 16:30 A | 2017-05-17 17:30 A |  | 100% |  |  | start no earlier than 2017-05-17 16:30 | YSCG_ADMINCONF; BGRA_ANALISTA | 2h | 2h | 207 | 207 |
| 11 | 2.2.1.2 | Evaluar los proveedores de requerimientos a entrevistar |  | 4h | 2017-05-17 17:30 A | 2017-05-18 11:30 A | 10 | 100% |  |  |  | YSCG_ADMINCONF; BGRA_ANALISTA | 8h | 8h | 828 | 828 |
| 12 | 2.2.1.3 | Definir la estrategia de recolección de requerimientos |  | 1h | 2017-05-19 16:30 A | 2017-05-19 17:30 A |  | 100% |  |  | start no earlier than 2017-05-19 16:30 | BGRA_ANALISTA | 1h | 1h | 98 | 98 |
| 13 | 2.2.1.4 | Planificar reuniones de elicitación de requerimientos |  | 4h | 2017-05-20 15:00 A | 2017-05-20 20:30 A |  | 100% |  |  | finish no earlier than 2017-05-20 20:30 | BGRA_ANALISTA; YSCG_ADMINPRO | 8h | 8h | 796 | 796 |
| 14 | 2.2.1.5 | Identificar los procesos del sistema |  | 1d | 2017-05-20 16:30 A | 2017-05-22 16:30 A |  | 100% |  |  | start no earlier than 2017-05-20 16:30 | BGRA_ANALISTA | 8h | 8h | 784 | 784 |
| 15 | 2.2.1.6 | Identificar los requerimientos funcionales |  | 1d | 2017-05-23 16:30 A | 2017-05-24 16:30 A | 14 | 100% |  |  |  | BGRA_ANALISTA | 8h | 8h | 784 | 784 |
| 16 | 2.2.1.7 | Identificar los requerimientos no funcionales |  | 4h | 2017-05-25 15:00 A | 2017-05-25 19:00 A | 15 | 100% |  |  | finish no earlier than 2017-05-25 20:30 | BGRA_ANALISTA | 4h | 4h | 392 | 392 |
| 17 | 2.2.2 | **Especificación de requerimientos** |  | 2.62d | 2017-05-25 09:00 A | 2017-05-27 16:00 A |  | 100% |  |  |  |  | 4h | 4h | 414 | 414 |
| 18 | 2.2.2.1 | Describrir los requerimientos |  | 2h | 2017-05-25 09:00 A | 2017-05-25 11:00 A |  | 100% |  |  | start no earlier than 2017-05-25 08:00 | BGRA_ANALISTA | 2h | 2h | 196 | 196 |
| 19 | 2.2.2.2 | Evaluar los requerimientos |  | 2h | 2017-05-25 09:00 A | 2017-05-27 16:00 A |  | 100% |  |  | finish no earlier than 2017-05-27 16:00 | YSCG_ADMINCONF; BGRA_ANALISTA | 2h | 2h | 218 | 218 |
| 20 | 2.2.3 | **Gestión de requerimientos** |  | 4d | 2017-05-26 09:00 A | 2017-05-30 20:30 A |  | 100% |  |  |  |  | 16h | 16h | 1,593 | 1,593 |
| 21 | 2.2.3.1 | Priorizar los requerimientos |  | 1h | 2017-05-29 16:30 A | 2017-05-29 17:30 A |  | 100% |  |  | start no earlier than 2017-05-29 16:30 | BGRA_ANALISTA | 1h | 1h | 98 | 98 |
| 22 | 2.2.3.2 | Almacenar los requerimientos en un repositorio central |  | 5h | 2017-05-26 09:00 A | 2017-05-26 16:00 A |  | 100% |  |  | finish no earlier than 2017-05-26 16:00 | BGRA_ANALISTA; JCGC_ASEGURADOR | 10h | 10h | 1,005 | 1,005 |
| 23 | 2.2.3.3 | Asignar al grupo de desarrollo los requerimientos del software |  | 1h | 2017-05-30 18:00 A | 2017-05-30 20:30 A |  | 100% |  |  | finish no earlier than 2017-05-30 20:30 | BGRA_ANALISTA | 1h | 1h | 98 | 98 |
| 24 | 2.2.3.4 | Administrar los cambios en los requerimientos |  | 2h | 2017-05-30 17:00 A | 2017-05-30 20:30 A |  | 100% |  |  | finish no earlier than 2017-05-30 20:30 | BGRA_ANALISTA | 2h | 2h | 196 | 196 |
| 25 | 2.2.3.5 | Administrar la trazabilidad de los requerimientos |  | 2h | 2017-05-30 17:00 A | 2017-05-30 20:30 A |  | 100% |  |  | finish no earlier than 2017-05-30 20:30 | BGRA_ANALISTA | 2h | 2h | 196 | 196 |
| 26 | 2.2.4 | Calificación V & V de requerimientos |  | 2h | 2017-05-30 16:30 A | 2017-05-30 18:30 A |  | 100% |  |  | start no earlier than 2017-05-30 16:30 | BGRA_VV; BGRA_ANALISTA; JCGC_ASEGURADOR | 6h | 6h | 602 | 602 |
| 27 | 2.2.5 | Hito de especificación de requerimientos | milestone, manual | 0d | 2017-05-30 08:00 A | 2017-05-30 08:00 A |  | 100% |  |  |  |  |  |  |  |  |

| ID | WBS | Task | Duration | Start | Finish | Predecessors | Complete | Constraint | Resources | Work | Actual work | Cost | Actual cost |
| --- | --- | --- | --- | --- | --- | --- | --- | --- | --- | --- | --- | --- | --- |
| 28 | 2.3 | **Planificación** | 11.12d | 2017-05-31 15:00 A | 2017-06-14 16:00 A |  | 100% |  |  | 122h | 122h | 12,322 | 12,322 |
| 29 | 2.3.1 | Definición de ciclo de vida | 1.12d | 2017-05-31 15:00 A | 2017-06-01 16:00 A |  | 100% | finish no earlier than 2017-06-01 16:00 | YSCG_ADMINPRO | 9h | 9h | 909 | 909 |
| 30 | 2.3.2 | Politicas del proyecto | 1h | 2017-06-01 18:00 A | 2017-06-01 20:30 A |  | 100% | finish no earlier than 2017-06-01 20:30 | YSCG_ADMINPRO | 1h | 1h | 101 | 101 |
| 31 | 2.3.3 | Actualizar el plan de proyecto | 1h | 2017-06-01 09:00 A | 2017-06-01 10:00 A |  | 100% | start no earlier than 2017-06-01 08:00 | YSCG_ADMINPRO | 1h | 1h | 101 | 101 |
| 32 | 2.3.4 | **Estimación** | 1.62d | 2017-06-01 08:00 A | 2017-06-02 16:00 A |  | 100% |  |  | 19h | 19h | 1,919 | 1,919 |
| 33 | 2.3.4.1 | Actualizar WBS/calendario | 5h | 2017-06-01 08:00 A | 2017-06-01 16:00 A |  | 100% | finish no earlier than 2017-06-05 20:30 | YSCG_ADMINPRO | 5h | 5h | 505 | 505 |
| 34 | 2.3.4.2 | Diccionario del WBS | 9h | 2017-06-01 09:00 A | 2017-06-02 10:00 A |  | 100% | start no earlier than 2017-06-01 08:00 | YSCG_ADMINPRO | 9h | 9h | 909 | 909 |
| 35 | 2.3.4.3 | Costos | 5h | 2017-06-02 09:00 A | 2017-06-02 16:00 A |  | 100% | finish no earlier than 2017-06-02 16:00 | YSCG_ADMINPRO | 5h | 5h | 505 | 505 |
| 36 | 2.3.5 | **Riesgos** | 7d | 2017-06-03 08:00 A | 2017-06-12 19:00 A |  | 100% |  |  | 69h | 69h | 6,969 | 6,969 |
| 37 | 2.3.5.1 | Identificación de riesgos | 3h | 2017-06-03 08:00 A | 2017-06-03 12:00 A |  | 100% | start no earlier than 2017-06-13 16:30 | YSCG_ADMINPRO | 3h | 3h | 303 | 303 |
| 38 | 2.3.5.2 | Base de datos de riesgos | 2.62d | 2017-06-03 08:00 A | 2017-06-06 16:00 A |  | 100% | finish no earlier than 2017-06-06 16:00 | YSCG_ADMINPRO | 21h | 21h | 2,121 | 2,121 |
| 39 | 2.3.5.3 | Análisis cuantitativo de riesgos del proyecto | 1d | 2017-06-06 16:00 A | 2017-06-07 16:00 A | 38 | 100% | finish no earlier than 2017-06-03 16:00 | YSCG_ADMINPRO | 8h | 8h | 808 | 808 |
| 40 | 2.3.5.4 | Análisis cualitativo de riesgo del proyecto | 1d | 2017-06-07 16:00 A | 2017-06-08 16:00 A | 39 | 100% | finish no earlier than 2017-06-03 16:00 | YSCG_ADMINPRO | 8h | 8h | 808 | 808 |
| 41 | 2.3.5.5 | Asignación de proridades | 13h | 2017-06-08 08:00 A | 2017-06-09 16:00 A |  | 100% | finish no earlier than 2017-06-09 16:00 | YSCG_ADMINPRO | 13h | 13h | 1,313 | 1,313 |
| 42 | 2.3.5.6 | Plan de mitigación y contingencia | 2d | 2017-06-09 08:00 A | 2017-06-12 19:00 A |  | 100% | finish no earlier than 2017-06-12 16:00 | YSCG_ADMINPRO | 16h | 16h | 1,616 | 1,616 |
| 43 | 2.3.6 | **2.3.6 Aseguramiento de la calidad** | 1.62d | 2017-06-13 08:00 A | 2017-06-14 16:00 A |  | 100% |  |  | 18h | 18h | 1,818 | 1,818 |
| 44 | 2.3.6.1 | Plan de gestión de la configuración | 1.62d | 2017-06-13 08:00 A | 2017-06-14 16:00 A |  | 100% | finish no earlier than 2017-06-14 16:00 | YSCG_ADMINPRO; YSCG_ADMINCONF | 13h | 13h | 1,313 | 1,313 |
| 45 | 2.3.6.2 | Junta de arranque de construcción | 5h | 2017-06-14 08:00 A | 2017-06-14 16:00 A |  | 100% | finish no earlier than 2017-06-13 16:00 | YSCG_ADMINPRO | 5h | 5h | 505 | 505 |
| 46 | 2.3.7 | Hito de planeación | 0.62d | 2017-06-14 09:00 A | 2017-06-14 16:00 A |  | 100% | start no earlier than 2017-06-14 08:00 | YSCG_ADMINPRO | 5h | 5h | 505 | 505 |
| 47 | 2.4 | **Diseño preliminar** | 8d | 2017-06-14 09:00 A | 2017-06-22 19:00 A |  | 100% |  |  | 70h | 70h | 7,155 | 7,155 |
| 48 | 2.4.1 | Definión de arquitectura | 2h | 2017-06-14 09:00 A | 2017-06-14 11:00 A |  | 100% | start no earlier than 2017-06-14 08:00 | JCGC_DISEÑADOR | 2h | 2h | 204 | 204 |
| 49 | 2.4.2 | **Diagramas UML** | 3.88d | 2017-06-14 09:00 A | 2017-06-17 18:00 A |  | 100% |  |  | 31h | 31h | 3,162 | 3,162 |
| 50 | 2.4.2.1 | Diagramas de casos de uso | 1.62d | 2017-06-14 09:00 A | 2017-06-15 16:00 A |  | 100% | finish no earlier than 2017-06-15 16:00 | JCGC_DISEÑADOR | 13h | 13h | 1,326 | 1,326 |
| 51 | 2.4.2.2 | Diagramas de secuencia | 1d | 2017-06-15 16:00 A | 2017-06-16 16:00 A | 50 | 100% |  | JCGC_DISEÑADOR | 8h | 8h | 816 | 816 |
| 52 | 2.4.2.3 | Diagrama de clases | 6h | 2017-06-16 16:00 A | 2017-06-17 12:00 A | 51 | 100% | finish no earlier than 2017-06-16 16:00 | JCGC_DISEÑADOR | 6h | 6h | 612 | 612 |
| 53 | 2.4.2.4 | Diagrama de componentes | 2h | 2017-06-17 12:00 A | 2017-06-17 16:00 A | 52 | 100% |  | JCGC_DISEÑADOR | 2h | 2h | 204 | 204 |
| 54 | 2.4.2.5 | Diagrama de despliegue | 2h | 2017-06-17 16:00 A | 2017-06-17 18:00 A | 53 | 100% |  | JCGC_DISEÑADOR | 2h | 2h | 204 | 204 |
| 55 | 2.4.3 | Mapa de navegación | 2h | 2017-06-17 09:00 A | 2017-06-17 11:00 A |  | 100% | start no earlier than 2017-06-17 08:00 | JCGC_DISEÑADOR | 2h | 2h | 204 | 204 |
| 56 | 2.4.4 | Maquetación/ bocetos | 0.62d | 2017-06-19 09:00 A | 2017-06-19 16:00 A | 55 | 100% | finish no earlier than 2017-06-19 16:00 | JCGC_DISEÑADOR | 5h | 5h | 510 | 510 |

| ID | WBS | Task | Type | Duration | Start | Finish | Predecessors | Complete | Actual start | Actual finish | Constraint | Resources | Work | Actual work | Cost | Actual cost |
| --- | --- | --- | --- | --- | --- | --- | --- | --- | --- | --- | --- | --- | --- | --- | --- | --- |
| 57 | 2.4.5 | **Base de datos** |  | 3d | 2017-06-20 09:00 A | 2017-06-22 19:00 A |  | 100% |  |  |  |  | 21h | 21h | 2,142 | 2,142 |
| 58 | 2.4.5.1 | Diagrama entidad- relación |  | 5h | 2017-06-20 09:00 A | 2017-06-20 16:00 A |  | 100% |  |  | finish no earlier than 2017-06-20 16:00 | JCGC_DISEÑADOR | 5h | 5h | 510 | 510 |
| 59 | 2.4.5.2 | Diagrama relacional |  | 1d | 2017-06-21 09:00 A | 2017-06-21 19:00 A | 58 | 100% |  |  | start no earlier than 2017-06-21 08:00 | JCGC_DISEÑADOR | 8h | 8h | 816 | 816 |
| 60 | 2.4.5.3 | Diccionario de datos |  | 1d | 2017-06-22 09:00 A | 2017-06-22 19:00 A | 59 | 100% |  |  |  | JCGC_DISEÑADOR | 8h | 8h | 816 | 816 |
| 61 | 2.4.6 | Integración V&V |  | 3h | 2017-06-22 09:00 A | 2017-06-22 12:00 A |  | 100% |  |  | start no earlier than 2017-06-22 08:00 | YSCG_ADMINCONF; JCGC_DISEÑADOR; BGRA_VV | 9h | 9h | 933 | 933 |
| 62 | 2.4.7 | Hito de diseño preliminar | milestone | 0d | 2017-06-22 08:00 A | 2017-06-22 08:00 A |  | 100% |  |  | start no earlier than 2017-06-22 08:00 | YSCG_ADMINCONF; YSCG_ADMINPRO |  |  |  |  |
| 63 | 2.5 | **Diseño detallado** |  | 4.75d | 2017-06-23 08:00 | 2017-06-28 16:00 | 47, 62 | 100% | 2017-06-23 09:00 | 2017-06-28 19:00 |  |  | 37h | 37h | 3,774 | 3,774 |
| 64 | 2.5.1 | Refinamiento del diseño |  | 1.62d | 2017-06-23 09:00 A | 2017-06-24 16:00 A |  | 100% |  |  | finish no earlier than 2017-06-24 16:00 | JCGC_DISEÑADOR | 13h | 13h | 1,326 | 1,326 |
| 65 | 2.5.2 | Pruebas unitarias o unidad |  | 3d | 2017-06-26 09:00 A | 2017-06-28 19:00 A |  | 100% |  |  | start no earlier than 2017-06-26 08:00 | JCGC_DISEÑADOR | 24h | 24h | 2,448 | 2,448 |
| 66 | 2.5.3 | Hito de diseño detallado | milestone | 0d | 2017-06-28 09:00 A | 2017-06-28 16:00 A |  | 100% |  |  | finish no earlier than 2017-06-28 16:00 | JCGC_DISEÑADOR |  |  |  |  |
| 67 | 2.6 | **Codificación** |  | 24.62d | 2017-06-29 09:00 A | 2017-07-27 16:00 A | 63 | 100% |  |  |  |  | 144h | 144h | 14,400 | 14,400 |
| 68 | 2.6.1 | Codificación de la base de datos |  | 5h | 2017-06-29 09:00 A | 2017-06-29 16:00 A |  | 100% |  |  | start no earlier than 2017-06-29 08:00 | BGRA_PROGRA | 5h | 5h | 500 | 500 |
| 69 | 2.6.2 | Index |  | 4h | 2017-06-30 09:00 A | 2017-06-30 13:00 A |  | 100% |  |  | start no earlier than 2017-06-30 08:00 | BGRA_PROGRA | 4h | 4h | 400 | 400 |
| 70 | 2.6.3 | **Módulo de usuario administrador** |  | 3.75d | 2017-06-30 08:00 | 2017-07-04 16:00 A |  | 100% | 2017-06-30 09:00 |  |  |  | 20h | 20h | 2,000 | 2,000 |
| 71 | 2.6.3.1 | Clase de usuarios |  | 2h | 2017-06-30 09:00 A | 2017-06-30 11:00 A |  | 100% |  |  |  | BGRA_PROGRA | 2h | 2h | 200 | 200 |
| 72 | 2.6.3.2 | Controlador | manual | 1.62d | 2017-07-01 08:00 A | 2017-07-03 13:00 A |  | 100% |  |  |  | BGRA_PROGRA | 13h | 13h | 1,300 | 1,300 |
| 73 | 2.6.3.3 | Vistas/interfaz |  | 5h | 2017-07-04 09:00 A | 2017-07-04 16:00 A |  | 100% |  |  | finish no earlier than 2017-07-04 16:00 | BGRA_PROGRA | 5h | 5h | 500 | 500 |
| 74 | 2.6.4 | **Módulo de categorías** |  | 2.75d | 2017-07-05 08:00 | 2017-07-07 16:00 A |  | 100% | 2017-07-05 09:00 |  |  |  | 23h | 23h | 2,300 | 2,300 |
| 75 | 2.6.4.1 | Clase de categorías |  | 2h | 2017-07-05 09:00 A | 2017-07-06 16:00 A |  | 100% |  |  | finish no earlier than 2017-07-06 16:00 | BGRA_PROGRA | 2h | 2h | 200 | 200 |
| 76 | 2.6.4.2 | **Controlador** |  | 1.75d | 2017-07-05 08:00 | 2017-07-06 16:00 |  | 100% | 2017-07-05 09:00 | 2017-07-07 16:00 |  |  | 8h | 8h | 800 | 800 |
| 77 | 2.6.4.2.1 | Alta |  | 2h | 2017-07-05 09:00 A | 2017-07-06 16:00 A |  | 100% |  |  | finish no earlier than 2017-07-06 16:00 | BGRA_PROGRA | 2h | 2h | 200 | 200 |
| 78 | 2.6.4.2.2 | Consulta |  | 2h | 2017-07-05 09:00 A | 2017-07-06 16:00 A |  | 100% |  |  | finish no earlier than 2017-07-06 16:00 | BGRA_PROGRA | 2h | 2h | 200 | 200 |
| 79 | 2.6.4.2.3 | Modificación |  | 2h | 2017-07-06 09:00 A | 2017-07-07 16:00 A |  | 100% |  |  | finish no earlier than 2017-07-07 16:00 | BGRA_PROGRA | 2h | 2h | 200 | 200 |
| 80 | 2.6.4.2.4 | Baja |  | 2h | 2017-07-06 09:00 A | 2017-07-07 16:00 A |  | 100% |  |  | finish no earlier than 2017-07-07 16:00 | BGRA_PROGRA | 2h | 2h | 200 | 200 |
| 81 | 2.6.4.3 | Vistas/interfaz |  | 3h | 2017-07-06 09:00 A | 2017-07-07 16:00 A |  | 100% |  |  | finish no earlier than 2017-07-07 16:00 | BGRA_PROGRA | 3h | 3h | 300 | 300 |
| 82 | 2.6.4.4 | Reportes |  | 10h | 2017-07-06 09:00 A | 2017-07-07 16:00 A |  | 100% |  |  | finish no earlier than 2017-07-07 16:00 | BGRA_PROGRA | 10h | 10h | 1,000 | 1,000 |

| ID | WBS | Task | Duration | Start | Finish | Complete | Constraint | Resources | Work | Actual work | Cost | Actual cost |
| --- | --- | --- | --- | --- | --- | --- | --- | --- | --- | --- | --- | --- |
| 83 | 2.6.5 | **Módulo de productos** | 6.62d | 2017-07-08 09:00 A | 2017-07-15 16:00 A | 100% |  |  | 15h | 15h | 1,500 | 1,500 |
| 84 | 2.6.5.1 | Clases de producto | 2h | 2017-07-08 09:00 A | 2017-07-08 11:00 A | 100% | start no earlier than 2017-07-08 08:00 | BGRA_PROGRA | 2h | 2h | 200 | 200 |
| 85 | 2.6.5.2 | **Controlador** | 2.62d | 2017-07-08 09:00 A | 2017-07-11 16:00 A | 100% |  |  | 8h | 8h | 800 | 800 |
| 86 | 2.6.5.2.1 | Alta | 2h | 2017-07-08 09:00 A | 2017-07-10 16:00 A | 100% | finish no earlier than 2017-07-10 16:00 | BGRA_PROGRA | 2h | 2h | 200 | 200 |
| 87 | 2.6.5.2.2 | Consulta | 2h | 2017-07-08 09:00 A | 2017-07-10 16:00 A | 100% | finish no earlier than 2017-07-10 16:00 | BGRA_PROGRA | 2h | 2h | 200 | 200 |
| 88 | 2.6.5.2.3 | Modificación | 2h | 2017-07-10 09:00 A | 2017-07-11 16:00 A | 100% | finish no earlier than 2017-07-11 16:00 | BGRA_PROGRA | 2h | 2h | 200 | 200 |
| 89 | 2.6.5.2.4 | Baja | 2h | 2017-07-10 09:00 A | 2017-07-11 16:00 A | 100% | finish no earlier than 2017-07-11 16:00 | BGRA_PROGRA | 2h | 2h | 200 | 200 |
| 90 | 2.6.5.3 | Vistas/interfaz | 3h | 2017-07-12 09:00 A | 2017-07-14 16:00 A | 100% | finish no earlier than 2017-07-14 16:00 | BGRA_PROGRA | 3h | 3h | 300 | 300 |
| 91 | 2.6.5.4 | Reportes | 2h | 2017-07-15 09:00 A | 2017-07-15 16:00 A | 100% | finish no earlier than 2017-07-15 16:00 | BGRA_PROGRA | 2h | 2h | 200 | 200 |
| 92 | 2.6.6 | **Módulo de ventas** | 1.62d | 2017-07-17 09:00 A | 2017-07-18 16:00 A | 100% |  |  | 15h | 15h | 1,500 | 1,500 |
| 93 | 2.6.6.1 | Clases de ventas | 2h | 2017-07-17 09:00 A | 2017-07-17 11:00 A | 100% |  | BGRA_PROGRA | 2h | 2h | 200 | 200 |
| 94 | 2.6.6.2 | **Controlador** | 1.62d | 2017-07-17 09:00 A | 2017-07-18 16:00 A | 100% |  |  | 8h | 8h | 800 | 800 |
| 95 | 2.6.6.2.1 | Alta | 2h | 2017-07-17 09:00 A | 2017-07-17 11:00 A | 100% |  | BGRA_PROGRA | 2h | 2h | 200 | 200 |
| 96 | 2.6.6.2.2 | Consulta | 2h | 2017-07-17 09:00 A | 2017-07-17 11:00 A | 100% |  | BGRA_PROGRA | 2h | 2h | 200 | 200 |
| 97 | 2.6.6.2.3 | Modificación | 2h | 2017-07-17 09:00 A | 2017-07-17 11:00 A | 100% |  | BGRA_PROGRA | 2h | 2h | 200 | 200 |
| 98 | 2.6.6.2.4 | Baja | 2h | 2017-07-18 09:00 A | 2017-07-18 16:00 A | 100% | finish no earlier than 2017-07-18 16:00 | BGRA_PROGRA | 2h | 2h | 200 | 200 |
| 99 | 2.6.6.3 | Vistas/interfaz | 3h | 2017-07-18 09:00 A | 2017-07-18 16:00 A | 100% | finish no earlier than 2017-07-18 16:00 | BGRA_PROGRA | 3h | 3h | 300 | 300 |
| 100 | 2.6.6.4 | Reportes | 2h | 2017-07-18 09:00 A | 2017-07-18 16:00 A | 100% | finish no earlier than 2017-07-18 16:00 | BGRA_PROGRA | 2h | 2h | 200 | 200 |
| 101 | 2.6.7 | **Módulo comentarios** | 1.25d | 2017-07-18 12:00 A | 2017-07-19 16:00 A | 100% |  |  | 15h | 15h | 1,500 | 1,500 |
| 102 | 2.6.7.1 | Clases de comentarios | 2h | 2017-07-18 12:00 A | 2017-07-18 16:00 A | 100% | finish no earlier than 2017-07-18 16:00 | BGRA_PROGRA | 2h | 2h | 200 | 200 |
| 103 | 2.6.7.2 | **Controlador** | 0.62d | 2017-07-19 09:00 A | 2017-07-19 16:00 A | 100% |  |  | 8h | 8h | 800 | 800 |
| 104 | 2.6.7.2.1 | Alta | 2h | 2017-07-19 09:00 A | 2017-07-19 16:00 A | 100% | finish no earlier than 2017-07-19 16:00 | BGRA_PROGRA | 2h | 2h | 200 | 200 |
| 105 | 2.6.7.2.2 | Consulta | 2h | 2017-07-19 09:00 A | 2017-07-19 16:00 A | 100% | finish no earlier than 2017-07-19 16:00 | BGRA_PROGRA | 2h | 2h | 200 | 200 |
| 106 | 2.6.7.2.3 | Modificación | 2h | 2017-07-19 09:00 A | 2017-07-19 16:00 A | 100% | finish no earlier than 2017-07-19 16:00 | BGRA_PROGRA | 2h | 2h | 200 | 200 |
| 107 | 2.6.7.2.4 | Baja | 2h | 2017-07-19 09:00 A | 2017-07-19 16:00 A | 100% | finish no earlier than 2017-07-19 16:00 | BGRA_PROGRA | 2h | 2h | 200 | 200 |
| 108 | 2.6.7.3 | Vistas/interfaz | 3h | 2017-07-19 09:00 A | 2017-07-19 16:00 A | 100% | finish no earlier than 2017-07-19 16:00 | BGRA_PROGRA | 3h | 3h | 300 | 300 |
| 109 | 2.6.7.4 | Reportes | 2h | 2017-07-19 09:00 A | 2017-07-19 16:00 A | 100% | finish no earlier than 2017-07-19 16:00 | BGRA_PROGRA | 2h | 2h | 200 | 200 |
| 110 | 2.6.8 | Módulo mi carrito | 4d | 2017-07-21 09:00 A | 2017-07-25 19:00 A | 100% | start no earlier than 2017-07-21 08:00 | BGRA_PROGRA | 32h | 32h | 3,200 | 3,200 |

| ID | WBS | Task | Type | Duration | Start | Finish | Predecessors | Complete | Actual start | Actual finish | Constraint | Resources | Work | Actual work | Cost | Actual cost |
| --- | --- | --- | --- | --- | --- | --- | --- | --- | --- | --- | --- | --- | --- | --- | --- | --- |
| 111 | 2.6.9 | **Módulo contacto** |  | 1.62d | 2017-07-26 09:00 A | 2017-07-27 16:00 A |  | 100% |  |  |  |  | 15h | 15h | 1,500 | 1,500 |
| 112 | 2.6.9.1 | Clases de contacto |  | 2h | 2017-07-26 09:00 A | 2017-07-26 11:00 A |  | 100% |  |  | start no earlier than 2017-07-26 08:00 | BGRA_PROGRA | 2h | 2h | 200 | 200 |
| 113 | 2.6.9.2 | **Controlador** |  | 1.62d | 2017-07-26 09:00 A | 2017-07-27 16:00 A |  | 100% |  |  |  |  | 8h | 8h | 800 | 800 |
| 114 | 2.6.9.2.1 | Alta |  | 2h | 2017-07-26 09:00 A | 2017-07-26 16:00 A |  | 100% |  |  | finish no earlier than 2017-07-26 16:00 | BGRA_PROGRA | 2h | 2h | 200 | 200 |
| 115 | 2.6.9.2.2 | Consulta |  | 2h | 2017-07-26 09:00 A | 2017-07-26 16:00 A |  | 100% |  |  | finish no earlier than 2017-07-26 16:00 | BGRA_PROGRA | 2h | 2h | 200 | 200 |
| 116 | 2.6.9.2.3 | Modificación |  | 2h | 2017-07-26 09:00 A | 2017-07-26 16:00 A |  | 100% |  |  | finish no earlier than 2017-07-26 16:00 | BGRA_PROGRA | 2h | 2h | 200 | 200 |
| 117 | 2.6.9.2.4 | Baja |  | 2h | 2017-07-27 09:00 A | 2017-07-27 16:00 A |  | 100% |  |  | finish no earlier than 2017-07-27 16:00 | BGRA_PROGRA | 2h | 2h | 200 | 200 |
| 118 | 2.6.9.3 | Vistas/interfaz |  | 3h | 2017-07-27 09:00 A | 2017-07-27 16:00 A |  | 100% |  |  | finish no earlier than 2017-07-27 16:00 | BGRA_PROGRA | 3h | 3h | 300 | 300 |
| 119 | 2.6.9.4 | Reportes |  | 2h | 2017-07-27 09:00 A | 2017-07-27 16:00 A |  | 100% |  |  | finish no earlier than 2017-07-27 16:00 | BGRA_PROGRA | 2h | 2h | 200 | 200 |
| 120 | 2.6.10 | Hito de codificación | milestone | 0d | 2017-07-27 09:00 A | 2017-07-27 16:00 A |  | 100% |  |  | finish no earlier than 2017-07-27 16:00 | YSCG_ADMINPRO; BGRA_PROGRA |  |  |  |  |
| 121 | 2.7 | **Pruebas** |  | 5d | 2017-07-27 16:00 A | 2017-08-02 16:00 A | 67 | 100% |  |  |  |  | 56h | 56h | 6,048 | 6,048 |
| 122 | 2.7.1 | **Caja blanca** |  | 5d | 2017-07-27 16:00 A | 2017-08-02 16:00 |  | 100% |  | 2017-08-02 13:00 |  |  | 56h | 56h | 6,048 | 6,048 |
| 123 | 2.7.1.1 | **Módulo de usuario administrador** |  | 0.5d | 2017-07-27 16:00 A | 2017-07-28 10:00 A |  | 100% |  |  |  |  | 8h | 8h | 864 | 864 |
| 124 | 2.7.1.1.1 | Pruebas unitarias |  | 4h | 2017-07-27 16:00 A | 2017-07-28 10:00 A |  | 100% |  |  |  | JCGC_TÉSTER | 4h | 4h | 432 | 432 |
| 125 | 2.7.1.1.2 | Pruebas de módulo |  | 4h | 2017-07-27 16:00 A | 2017-07-28 10:00 A |  | 100% |  |  |  | JCGC_TÉSTER | 4h | 4h | 432 | 432 |
| 126 | 2.7.1.2 | **Módulo de categorías** |  | 0.5d | 2017-07-27 16:00 A | 2017-07-28 10:00 A |  | 100% |  |  |  |  | 8h | 8h | 864 | 864 |
| 127 | 2.7.1.2.1 | Pruebas unitarias |  | 4h | 2017-07-27 16:00 A | 2017-07-28 10:00 A |  | 100% |  |  |  | JCGC_TÉSTER | 4h | 4h | 432 | 432 |
| 128 | 2.7.1.2.2 | Pruebas de módulo |  | 4h | 2017-07-27 16:00 A | 2017-07-28 10:00 A |  | 100% |  |  |  | JCGC_TÉSTER | 4h | 4h | 432 | 432 |
| 129 | 2.7.1.3 | **Módulo de productos** |  | 0.5d | 2017-07-27 16:00 A | 2017-07-28 10:00 A |  | 100% |  |  |  |  | 8h | 8h | 864 | 864 |
| 130 | 2.7.1.3.1 | Pruebas unitarias |  | 4h | 2017-07-27 16:00 A | 2017-07-28 10:00 A |  | 100% |  |  |  | JCGC_TÉSTER | 4h | 4h | 432 | 432 |
| 131 | 2.7.1.3.2 | Pruebas de módulo |  | 4h | 2017-07-27 16:00 A | 2017-07-28 10:00 A |  | 100% |  |  |  | JCGC_TÉSTER | 4h | 4h | 432 | 432 |
| 132 | 2.7.1.4 | **Módulo de ventas** |  | 1.75d | 2017-07-28 08:00 | 2017-07-29 16:00 |  | 100% | 2017-07-28 09:00 | 2017-07-28 13:00 |  |  | 8h | 8h | 864 | 864 |
| 133 | 2.7.1.4.1 | Pruebas unitarias |  | 4h | 2017-07-28 09:00 A | 2017-07-28 13:00 A |  | 100% |  |  |  | JCGC_TÉSTER | 4h | 4h | 432 | 432 |
| 134 | 2.7.1.4.2 | Pruebas de módulo |  | 4h | 2017-07-28 09:00 A | 2017-07-28 13:00 A |  | 100% |  |  |  | JCGC_TÉSTER | 4h | 4h | 432 | 432 |

| ID | WBS | Task | Type | Duration | Start | Finish | Predecessors | Complete | Actual start | Actual finish | Constraint | Resources | Work | Actual work | Cost | Actual cost |
| --- | --- | --- | --- | --- | --- | --- | --- | --- | --- | --- | --- | --- | --- | --- | --- | --- |
| 135 | 2.7.1.5 | **Módulo comentarios** |  | 1.75d | 2017-07-28 08:00 | 2017-07-29 16:00 |  | 100% | 2017-07-28 09:00 | 2017-07-28 13:00 |  |  | 8h | 8h | 864 | 864 |
| 136 | 2.7.1.5.1 | Pruebas unitarias |  | 4h | 2017-07-28 09:00 A | 2017-07-28 13:00 A |  | 100% |  |  |  | JCGC_TÉSTER | 4h | 4h | 432 | 432 |
| 137 | 2.7.1.5.2 | Pruebas de módulo |  | 4h | 2017-07-28 09:00 A | 2017-07-28 13:00 A |  | 100% |  |  |  | JCGC_TÉSTER | 4h | 4h | 432 | 432 |
| 138 | 2.7.1.6 | **Módulo mi carrito** |  | 1.75d | 2017-08-01 08:00 | 2017-08-02 16:00 |  | 100% | 2017-08-01 09:00 | 2017-08-01 13:00 |  |  | 8h | 8h | 864 | 864 |
| 139 | 2.7.1.6.1 | Pruebas unitarias |  | 4h | 2017-08-01 09:00 A | 2017-08-01 13:00 A |  | 100% |  |  |  | JCGC_TÉSTER | 4h | 4h | 432 | 432 |
| 140 | 2.7.1.6.2 | Pruebas de módulo |  | 4h | 2017-08-01 09:00 A | 2017-08-01 13:00 A |  | 100% |  |  |  | JCGC_TÉSTER | 4h | 4h | 432 | 432 |
| 141 | 2.7.1.7 | **Módulo contacto** |  | 0.5d | 2017-08-02 09:00 A | 2017-08-02 13:00 A |  | 100% |  |  |  |  | 8h | 8h | 864 | 864 |
| 142 | 2.7.1.7.1 | Pruebas unitarias |  | 4h | 2017-08-02 09:00 A | 2017-08-02 13:00 A |  | 100% |  |  | start no earlier than 2017-08-02 08:00 | JCGC_TÉSTER | 4h | 4h | 432 | 432 |
| 143 | 2.7.1.7.2 | Pruebas de módulo |  | 4h | 2017-08-02 09:00 A | 2017-08-02 13:00 A |  | 100% |  |  | start no earlier than 2017-08-02 08:00 | JCGC_TÉSTER | 4h | 4h | 432 | 432 |
| 144 | 2.7.2 | Hito de pruebas | milestone | 0d | 2017-08-02 16:00 A | 2017-08-02 16:00 A | 122 | 100% |  |  | finish no earlier than 2017-08-02 16:00 | YSCG_ADMINPRO; JCGC_TÉSTER |  |  |  |  |
| 145 | 2.8 | **Integración** |  | 1.75d | 2017-08-03 08:00 | 2017-08-04 16:00 A |  | 100% | 2017-08-03 09:00 |  |  |  | 8h | 8h | 864 | 864 |
| 146 | 2.8.1 | Pruebas de integración |  | 1d | 2017-08-03 09:00 A | 2017-08-03 19:00 A |  | 100% |  |  |  | JCGC_TÉSTER | 8h | 8h | 864 | 864 |
| 147 | 2.8.2 | Hito de integración | milestone | 0d | 2017-08-04 16:00 A | 2017-08-04 16:00 A | 146 | 100% |  |  | finish no earlier than 2017-08-04 16:00 | YSCG_ADMINCONF; BGRA_VV; JCGC_ASEGURADOR |  |  |  |  |
| 148 | 2.9 | **Implementación** |  | 0.62d | 2017-08-05 09:00 A | 2017-08-05 16:00 A | 145 | 100% |  |  |  |  | 20h | 20h | 2,050 | 2,050 |
| 149 | 2.9.1 | Lista de hosting |  | 5h | 2017-08-05 09:00 A | 2017-08-05 16:00 A |  | 100% |  |  | finish no earlier than 2017-08-05 16:00 | YSCG_ADMINPRO | 5h | 5h | 505 | 505 |
| 150 | 2.9.2 | Evaluación de hosting |  | 5h | 2017-08-05 09:00 A | 2017-08-05 16:00 A |  | 100% |  |  | finish no earlier than 2017-08-05 16:00 | YSCG_ADMINPRO | 5h | 5h | 505 | 505 |
| 151 | 2.9.3 | Montar el sitio en el hosting |  | 5h | 2017-08-05 09:00 A | 2017-08-05 16:00 A |  | 100% |  |  | finish no earlier than 2017-08-05 16:00 | BGRA_PROGRA | 5h | 5h | 500 | 500 |
| 152 | 2.9.4 | Pruebas de sistema |  | 5h | 2017-08-05 09:00 A | 2017-08-05 16:00 A |  | 100% |  |  | finish no earlier than 2017-08-05 16:00 | JCGC_TÉSTER | 5h | 5h | 540 | 540 |
| 153 | 2.9.5 | Hito de implementación | milestone | 0d | 2017-08-05 16:00 A | 2017-08-05 16:00 A |  | 100% |  |  | finish no earlier than 2017-08-05 16:00 | YSCG_ADMINPRO |  |  |  |  |
| 154 | 2.10 | **Cierre de proyecto** |  | 5.62d | 2017-08-07 09:00 A | 2017-08-12 16:00 A | 148 | 100% |  |  |  |  | 40h | 40h | 4,040 | 4,040 |
| 155 | 2.10.1 | Carta de aceptación |  | 3h | 2017-08-07 09:00 A | 2017-08-07 12:00 A |  | 100% |  |  | start no earlier than 2017-08-07 08:00 | YSCG_ADMINPRO | 3h | 3h | 303 | 303 |
| 156 | 2.10.2 | Acta de cierre de proyecto |  | 3h | 2017-08-07 09:00 A | 2017-08-07 12:00 A |  | 100% |  |  | start no earlier than 2017-08-07 08:00 | YSCG_ADMINPRO | 3h | 3h | 303 | 303 |
| 157 | 2.10.3 | Evaluación de desempeño |  | 2h | 2017-08-07 09:00 A | 2017-08-07 11:00 A |  | 100% |  |  | start no earlier than 2017-08-07 08:00 | YSCG_ADMINPRO | 2h | 2h | 202 | 202 |
| 158 | 2.10.4 | Junta de lecciones aprendidas |  | 3h | 2017-08-08 09:00 A | 2017-08-08 12:00 A |  | 100% |  |  | start no earlier than 2017-08-08 08:00 | YSCG_ADMINPRO | 3h | 3h | 303 | 303 |
| 159 | 2.10.5 | Revisión de adherencias |  | 3h | 2017-08-08 09:00 A | 2017-08-08 12:00 A |  | 100% |  |  | start no earlier than 2017-08-08 08:00 | YSCG_ADMINPRO | 3h | 3h | 303 | 303 |
| 160 | 2.10.6 | Liberación de recursos |  | 2h | 2017-08-09 09:00 A | 2017-08-09 11:00 A |  | 100% |  |  | start no earlier than 2017-08-09 08:00 | YSCG_ADMINPRO | 2h | 2h | 202 | 202 |
| 161 | 2.10.7 | Informe final (Cierre) |  | 3d | 2017-08-09 09:00 A | 2017-08-11 19:00 A |  | 100% |  |  | start no earlier than 2017-08-09 08:00 | YSCG_ADMINPRO | 24h | 24h | 2,424 | 2,424 |
| 162 | 2.10.8 | Hito de cierre de proyecto | milestone | 0d | 2017-08-12 16:00 A | 2017-08-12 16:00 A |  | 100% |  |  | finish no earlier than 2017-08-12 16:00 | YSCG_ADMINPRO |  |  |  |  |

| ID | WBS | Task | Type | Duration | Start | Finish | Total slack | Constraint |
| --- | --- | --- | --- | --- | --- | --- | --- | --- |
| 166 | 3 | **Revisión** |  | 81d | 2017-05-06 08:00 | 2017-08-12 08:00 | 0d |  |
| 167 | 3.1 | Revisión 1 | milestone, manual | 0d | 2017-05-06 08:00 | 2017-05-06 08:00 |  | start no earlier than 2017-05-06 08:00 |
| 168 | 3.2 | Revisión 2 | milestone, manual | 0d | 2017-05-13 08:00 | 2017-05-13 08:00 |  | start no earlier than 2017-05-13 08:00 |
| 169 | 3.3 | Revisión 3 | milestone, manual | 0d | 2017-05-20 08:00 | 2017-05-20 08:00 |  | start no earlier than 2017-05-20 08:00 |
| 170 | 3.4 | Revisión 4 | milestone, manual | 0d | 2017-05-27 08:00 | 2017-05-27 08:00 |  | start no earlier than 2017-05-27 08:00 |
| 171 | 3.5 | Revisión 5 | milestone, manual | 0d | 2017-06-03 08:00 | 2017-06-03 08:00 |  | start no earlier than 2017-06-03 08:00 |
| 172 | 3.6 | Revisión 6 | milestone, manual | 0d | 2017-06-10 08:00 | 2017-06-10 08:00 |  | start no earlier than 2017-06-10 08:00 |
| 173 | 3.7 | Revisión 7 | milestone, manual | 0d | 2017-06-17 08:00 | 2017-06-17 08:00 |  | start no earlier than 2017-06-17 08:00 |
| 174 | 3.8 | Revisión 8 | milestone, manual | 0d | 2017-06-24 08:00 | 2017-06-24 08:00 |  | start no earlier than 2017-06-24 08:00 |
| 175 | 3.9 | Revisión 9 | milestone, manual | 0d | 2017-07-01 08:00 | 2017-07-01 08:00 |  | start no earlier than 2017-07-01 08:00 |
| 176 | 3.10 | Revisión 10 | milestone, manual | 0d | 2017-07-08 08:00 | 2017-07-08 08:00 |  | start no earlier than 2017-07-08 08:00 |
| 177 | 3.11 | Revisión 11 | milestone, manual | 0d | 2017-07-15 08:00 | 2017-07-15 08:00 |  | start no earlier than 2017-07-15 08:00 |
| 178 | 3.12 | Revisión 12 | milestone, manual | 0d | 2017-07-22 08:00 | 2017-07-22 08:00 |  | start no earlier than 2017-07-22 08:00 |
| 179 | 3.13 | Revisión 13 | milestone, manual | 0d | 2017-07-29 08:00 | 2017-07-29 08:00 |  | start no earlier than 2017-07-29 08:00 |
| 180 | 3.14 | Revisión 14 | milestone, manual | 0d | 2017-08-05 08:00 | 2017-08-05 08:00 |  | start no earlier than 2017-08-05 08:00 |
| 181 | 3.15 | Revisión 15 | milestone, manual | 0d | 2017-08-12 08:00 | 2017-08-12 08:00 |  | start no earlier than 2017-08-12 08:00 |
